# BSN_Project_Schedule_v1.4_EN

Schedule from MS Project, 2016-09-05 to 2016-12-21.

## Calendars

- Standard: Mon-Fri 08:00-12:00, 13:00-17:00; Sat-Sun off.

## Resources

| Resource |
| --- |
| DangVH |
| HuyenPT |
| VanTTC |
| HaiCM |
| YenNTH |
| All Members |
| Mr.SangNV |

## Schedule

| ID | WBS | Task | Type | Duration | Start | Finish | Predecessors | Total slack | Free slack | Constraint | Resources | Work |
| --- | --- | --- | --- | --- | --- | --- | --- | --- | --- | --- | --- | --- |
| 1 | 1 | **Bookaholic Social Network** |  | 78d? | 2016-09-05 08:00 | 2016-12-21 17:00 |  | 0d |  |  |  | 2400h |
| 2 | 1.1 | **Initial** |  | 9d | 2016-09-05 08:00 | 2016-09-15 17:00 |  | 5d | 0d |  |  | 328h |
| 3 | 1.1.1 | Form up team roles |  | 0.5d | 2016-09-05 08:00 | 2016-09-05 12:00 |  | 7.5d | 0d | start no earlier than 2016-09-05 08:00 | All Members | 4h |
| 4 | 1.1.2 | Select project idea |  | 0.5d | 2016-09-05 13:00 | 2016-09-05 17:00 | 3 | 7.5d | 0d | start no earlier than 2016-09-05 08:00 | All Members | 4h |
| 5 | 1.1.3 | **Develop project idea** |  | 6d | 2016-09-06 08:00 | 2016-09-13 17:00 | 4 | 7d | 0d |  |  | 144h |
| 6 | 1.1.3.1 | Define Project Scope |  | 0.5d | 2016-09-06 08:00 | 2016-09-06 12:00 |  | 7.5d | 0d | start no earlier than 2016-09-06 08:00 | All Members | 4h |
| 7 | 1.1.3.2 | Define Project Features |  | 0.5d | 2016-09-06 08:00 | 2016-09-06 12:00 | 6SS | 7.5d | 0.5d | start no earlier than 2016-09-06 08:00 | All Members | 4h |
| 8 | 1.1.3.3 | Create Project Introduction |  | 1d | 2016-09-07 08:00 | 2016-09-07 17:00 | 7 | 10d | 0d | start no earlier than 2016-09-07 08:00 | HuyenPT | 8h |
| 9 | 1.1.3.4 | Review Project Introduction |  | 0.5d | 2016-09-08 08:00 | 2016-09-08 12:00 | 8 | 10d | 0d |  | VanTTC | 4h |
| 10 | 1.1.3.5 | Update Project Introduction |  | 0.5d | 2016-09-08 13:00 | 2016-09-08 17:00 | 9 | 10d |  | start no earlier than 2016-09-08 08:00 | HuyenPT | 4h |
| 11 | 1.1.3.6 | Create Mockup (Part 1) |  | 5d | 2016-09-07 08:00 | 2016-09-13 17:00 | 7 | 7d |  | start no earlier than 2016-09-07 08:00 | HaiCM; VanTTC; YenNTH | 120h |
| 12 | 1.1.4 | **Environment** |  | 1d | 2016-09-06 08:00 | 2016-09-06 17:00 | 5SS | 12d |  |  |  | 8h |
| 13 | 1.1.4.1 | Install tools & environment |  | 0.5d | 2016-09-06 08:00 | 2016-09-06 12:00 |  | 12d | 0d | start no earlier than 2016-09-06 08:00 | All Members | 4h |
| 14 | 1.1.4.2 | Training using tools & environment |  | 0.5d | 2016-09-06 13:00 | 2016-09-06 17:00 | 13 | 12d |  | start no earlier than 2016-09-06 08:00 | DangVH | 4h |
| 15 | 1.1.5 | **Technology Research (Part 1)** |  | 4d | 2016-09-09 08:00 | 2016-09-14 17:00 |  | 5d | 0d |  |  | 160h |
| 16 | 1.1.5.1 | Study .net MVC5 |  | 4d | 2016-09-09 08:00 | 2016-09-14 17:00 |  | 5d | 0d | start no earlier than 2016-09-09 08:00 | DangVH; HuyenPT; VanTTC | 96h |
| 17 | 1.1.5.2 | Study Bootstrap, HTML5, CSS3 |  | 4d | 2016-09-09 08:00 | 2016-09-14 17:00 | 16SS | 5d |  | start no earlier than 2016-09-09 08:00 | HaiCM; YenNTH | 64h |
| 18 | 1.1.6 | Kick-off meeting |  | 1d | 2016-09-15 08:00 | 2016-09-15 17:00 | 15 | 5d | 0d |  | All Members | 8h |
| 19 | 1.1.7 | End of initiation phase | milestone | 0d | 2016-09-15 17:00 | 2016-09-15 17:00 | 18 | 5d |  | start no earlier than 2016-09-15 08:00 |  |  |
| 20 | 1.2 | **Implement 1** |  | 19d? | 2016-09-16 08:00 | 2016-10-12 17:00 | 2 | 0d |  |  |  | 736h |
| 21 | 1.2.1 | **Requirement** |  | 1d | 2016-09-16 08:00 | 2016-09-16 17:00 |  | 5d | 0d |  |  | 8h |
| 22 | 1.2.1.1 | Define User Requirement (Part 1) |  | 1d | 2016-09-16 08:00 | 2016-09-16 17:00 |  | 5d |  | start no earlier than 2016-09-16 08:00 | VanTTC | 8h |
| 23 | 1.2.2 | **Analysis & design** |  | 13d | 2016-09-19 08:00 | 2016-10-06 08:00 | 21 | 5d |  |  |  | 440h |
| 24 | 1.2.2.1 | **Q&A Sheet** |  | 2d | 2016-09-19 08:00 | 2016-09-20 17:00 |  | 15.5d | 0d |  |  | 16h |
| 25 | 1.2.2.1.1 | Create Q&A Sheet |  | 0.5d | 2016-09-19 08:00 | 2016-09-19 12:00 |  | 15.5d | 0d | start no earlier than 2016-09-19 08:00 | YenNTH | 4h |
| 26 | 1.2.2.1.2 | Review Q&A Sheet |  | 0.3d | 2016-09-19 13:00 | 2016-09-19 15:24 | 25 | 15.5d | 0d | start no earlier than 2016-09-19 08:00 | HuyenPT | 2.4h |
| 27 | 1.2.2.1.3 | Update Q&A Sheet |  | 0.2d | 2016-09-19 15:24 | 2016-09-19 17:00 | 26 | 15.5d | 0d | start no earlier than 2016-09-19 08:00 | YenNTH | 1.6h |
| 28 | 1.2.2.1.4 | Translate Q&A Sheet to Japanese |  | 1d | 2016-09-20 08:00 | 2016-09-20 17:00 | 27 | 15.5d | 0d | start no earlier than 2016-09-20 08:00 | YenNTH | 8h |
| 29 | 1.2.2.1.5 | Complete Q&A Sheet | milestone | 0d | 2016-09-20 17:00 | 2016-09-20 17:00 | 28 | 15.5d |  |  |  |  |

| ID | WBS | Task | Type | Duration | Start | Finish | Predecessors | Total slack | Free slack | Constraint | Resources | Work |
| --- | --- | --- | --- | --- | --- | --- | --- | --- | --- | --- | --- | --- |
| 30 | 1.2.2.2 | **Create Project Plan** |  | 2d | 2016-09-19 08:00 | 2016-09-20 17:00 | 24SS | 5d | 0d |  |  | 68h |
| 31 | 1.2.2.2.1 | Create PP Review Checklist |  | 0.5d | 2016-09-19 08:00 | 2016-09-19 12:00 |  | 5d | 0d |  | YenNTH | 4h |
| 32 | 1.2.2.2.2 | Create Project Plan in MS Word |  | 1d | 2016-09-19 08:00 | 2016-09-19 17:00 | 31SS | 6d |  |  | HuyenPT | 8h |
| 33 | 1.2.2.2.3 | Create Project Schedule in .mpp file |  | 2d | 2016-09-19 08:00 | 2016-09-20 17:00 | 31SS | 5d |  |  | DangVH; VanTTC | 32h |
| 34 | 1.2.2.2.4 | Create CM Plan |  | 1d | 2016-09-19 08:00 | 2016-09-19 17:00 | 31SS | 5d | 0d |  | HaiCM | 8h |
| 35 | 1.2.2.2.5 | Review Project Plan, CM Plan, Schedule |  | 0.5d | 2016-09-20 08:00 | 2016-09-20 12:00 | 34 | 5d | 0d |  | HuyenPT | 4h |
| 36 | 1.2.2.2.6 | Update Project Plan, CM Plan, Schedule |  | 0.5d | 2016-09-20 13:00 | 2016-09-20 17:00 | 35 | 5d | 0d | start no earlier than 2016-09-16 08:00 | DangVH; HaiCM; HuyenPT | 12h |
| 37 | 1.2.2.2.7 | Complete Project Plan | milestone | 0d | 2016-09-20 17:00 | 2016-09-20 17:00 | 36 | 5d |  | start no earlier than 2016-09-20 08:00 |  |  |
| 38 | 1.2.2.3 | **User Requirement Specification (Part 1)** |  | 2d | 2016-09-21 08:00 | 2016-09-23 08:00 | 30 | 13d | 0d |  |  | 24h |
| 39 | 1.2.2.3.1 | Create SRS Review Checklist (Part 1) |  | 1d | 2016-09-21 08:00 | 2016-09-21 17:00 |  | 13d | 0d | start no earlier than 2016-09-16 08:00 | YenNTH | 8h |
| 40 | 1.2.2.3.2 | Create User Requirement Specification (Part 1) |  | 1d | 2016-09-21 08:00 | 2016-09-21 17:00 | 39SS | 13d | 0d | start no earlier than 2016-09-16 08:00 | VanTTC | 8h |
| 41 | 1.2.2.3.3 | Review User Requirement Specification (Part 1) |  | 0.5d | 2016-09-22 08:00 | 2016-09-22 12:00 | 40 | 13d | 0d |  | HuyenPT | 4h |
| 42 | 1.2.2.3.4 | Update User Requirement Specification (Part 1) |  | 0.5d | 2016-09-22 13:00 | 2016-09-22 17:00 | 41 | 13d | 0d | start no earlier than 2016-09-15 08:00 | VanTTC | 4h |
| 43 | 1.2.2.3.5 | Complete User Requirement Specification (Part 1) | milestone | 0d | 2016-09-23 08:00 | 2016-09-23 08:00 | 42 | 13d |  | start no earlier than 2016-09-23 08:00 |  |  |
| 44 | 1.2.2.4 | Create Progress Report 1 (Part 1) |  | 1d | 2016-09-23 08:00 | 2016-09-23 17:00 | 38 | 13d | 1d |  | HuyenPT | 8h |
| 45 | 1.2.2.5 | Submit Report 1 (Part 1) | milestone | 0d | 2016-09-27 08:00 | 2016-09-27 08:00 | 44 | 12d |  | start no earlier than 2016-09-27 08:00 |  |  |
| 46 | 1.2.2.6 | **Design** |  | 5.5d | 2016-09-28 08:00 | 2016-10-05 12:00 | 30 | 0d |  |  |  | 316h |
| 47 | 1.2.2.6.1 | Create Architecture Design |  | 3d | 2016-09-28 08:00 | 2016-09-30 17:00 |  | 0d |  | start no earlier than 2016-09-28 08:00 | DangVH; HuyenPT; VanTTC | 72h |
| 48 | 1.2.2.6.2 | Create Mockup (Part 2) |  | 5d | 2016-09-28 08:00 | 2016-10-04 17:00 | 47SS | 6d |  | start no earlier than 2016-09-28 08:00 | HaiCM; VanTTC; YenNTH | 120h |
| 49 | 1.2.2.6.3 | Database Design |  | 3d | 2016-09-28 08:00 | 2016-09-30 17:00 | 47SS | 0d |  | start no earlier than 2016-09-28 08:00 | DangVH; HuyenPT; VanTTC | 72h |
| 50 | 1.2.2.6.4 | Class/Component Design |  | 2d | 2016-10-03 08:00 | 2016-10-04 17:00 | 49 | 5d | 0d |  | DangVH; HuyenPT; VanTTC | 48h |
| 51 | 1.2.2.6.5 | Create Design Review Checklist |  | 0.5d | 2016-10-05 08:00 | 2016-10-05 12:00 | 50 | 5d | 0d |  | YenNTH | 4h |
| 52 | 1.2.2.7 | Create Progress Report 2 (Part 1) |  | 0.5d | 2016-10-05 13:00 | 2016-10-05 17:00 | 51 | 5d | 0d |  | HuyenPT | 4h |
| 53 | 1.2.2.8 | Create Coding Checklist (Part 1) |  | 0.5d | 2016-09-21 08:00 | 2016-09-21 12:00 | 24 | 15.5d |  |  | DangVH | 4h |
| 54 | 1.2.2.9 | Submit Report 2 (Part 1) | milestone | 0d | 2016-10-06 08:00 | 2016-10-06 08:00 | 52 | 5d |  | start no earlier than 2016-10-06 08:00 |  |  |

| ID | WBS | Task | Duration | Start | Finish | Predecessors | Total slack | Free slack | Constraint | Resources | Work |
| --- | --- | --- | --- | --- | --- | --- | --- | --- | --- | --- | --- |
| 55 | 1.2.3 | **Development** | 6d? | 2016-10-03 08:00 | 2016-10-10 17:00 | 49 | 0d |  |  |  | 180h |
| 56 | 1.2.3.1 | **Technology Research (Part 2)** | 0.5d | 2016-10-03 08:00 | 2016-10-03 12:00 |  | 0d |  |  |  | 24h |
| 57 | 1.2.3.1.1 | Google API | 0.5d | 2016-10-03 08:00 | 2016-10-03 12:00 |  | 0d |  | start no earlier than 2016-09-14 08:00 | DangVH; HuyenPT; VanTTC | 12h |
| 58 | 1.2.3.1.2 | Facebook API | 0.5d | 2016-10-03 08:00 | 2016-10-03 12:00 | 57SS | 0d |  |  | DangVH; HuyenPT; VanTTC | 12h |
| 59 | 1.2.3.2 | Create Unit Test Checklist (Part 1) | 0.5d | 2016-10-03 08:00 | 2016-10-03 12:00 | 56SS | 7.5d |  |  | DangVH | 4h |
| 60 | 1.2.3.3 | **Code Screen Module** | 5d? | 2016-10-03 08:00 | 2016-10-07 17:00 | 56SS | 3d |  |  |  | 96h |
| 61 | 1.2.3.3.1 | "Admin Management" Screen | 1d | 2016-10-03 08:00 | 2016-10-03 17:00 |  | 3d | 0d |  | HaiCM; YenNTH | 16h |
| 62 | 1.2.3.3.2 | "Đăng Nhập"Screen | 1d? | 2016-10-03 08:00 | 2016-10-03 17:00 | 61SS | 3d | 0d |  | HaiCM; YenNTH | 16h |
| 63 | 1.2.3.3.3 | "Trang Chủ"Screen | 2d | 2016-10-04 08:00 | 2016-10-05 17:00 | 62 | 3d | 0d | start no earlier than 2016-09-19 08:00 | HaiCM; YenNTH | 32h |
| 64 | 1.2.3.3.4 | "Trang cá nhân"Screen | 1d? | 2016-10-06 08:00 | 2016-10-06 17:00 | 63 | 3d | 0d | start no earlier than 2016-09-19 08:00 | HaiCM; YenNTH | 16h |
| 65 | 1.2.3.3.5 | "Tác giả"Screen | 1d | 2016-10-07 08:00 | 2016-10-07 17:00 | 64 | 3d |  |  | HaiCM; YenNTH | 16h |
| 66 | 1.2.3.4 | **Code & Unit Test** | 5.5d? | 2016-10-03 13:00 | 2016-10-10 17:00 | 56 | 0d |  |  |  | 56h |
| 67 | 1.2.3.4.1 | **Admin Module (Part 1)** | 1d | 2016-10-03 13:00 | 2016-10-04 12:00 |  | 0d |  |  |  | 16h |
| 68 | 1.2.3.4.1.1 | Book Management Feature | 0.5d | 2016-10-03 13:00 | 2016-10-03 17:00 |  | 0d |  |  | DangVH | 4h |
| 69 | 1.2.3.4.1.2 | Publisher Management Feature | 0.5d | 2016-10-03 13:00 | 2016-10-03 17:00 | 68SS | 0.5d |  |  | VanTTC | 4h |
| 70 | 1.2.3.4.1.3 | Slide Management Feature | 1d | 2016-10-03 13:00 | 2016-10-04 12:00 | 68SS | 0d |  |  | HuyenPT | 8h |
| 71 | 1.2.3.4.2 | **Account Management Module** | 4.5d? | 2016-10-04 13:00 | 2016-10-10 17:00 | 67 | 0d |  |  |  | 40h |
| 72 | 1.2.3.4.2.1 | Account Register Function | 2d | 2016-10-04 13:00 | 2016-10-06 12:00 |  | 0d |  |  | VanTTC | 16h |
| 73 | 1.2.3.4.2.2 | LogIn/LogOut Feature | 1.5d | 2016-10-06 13:00 | 2016-10-07 17:00 | 72 | 0d |  |  | DangVH | 12h |
| 74 | 1.2.3.4.2.3 | Edit Profile Function | 0.5d? | 2016-10-10 08:00 | 2016-10-10 12:00 | 73 | 0d |  |  | HuyenPT | 4h |
| 75 | 1.2.3.4.2.4 | Reset Password Function | 1d | 2016-10-10 08:00 | 2016-10-10 17:00 | 74SS | 0d |  |  | DangVH | 8h |
| 76 | 1.2.4 | **Testing** | 4d | 2016-10-03 13:00 | 2016-10-07 12:00 | 66SS | 2.5d | 0d |  |  | 80h |
| 77 | 1.2.4.1 | Create Test Plan (Part 1) | 0.5d | 2016-10-03 13:00 | 2016-10-03 17:00 |  | 4.5d | 0d |  | YenNTH; HaiCM | 8h |
| 78 | 1.2.4.2 | Create Test Plan Checklist (Part 1) | 0.5d | 2016-10-04 08:00 | 2016-10-04 12:00 | 77 | 4.5d | 0d |  | HaiCM; YenNTH | 8h |

| ID | WBS | Task | Type | Duration | Start | Finish | Predecessors | Total slack | Free slack | Constraint | Resources | Work |
| --- | --- | --- | --- | --- | --- | --- | --- | --- | --- | --- | --- | --- |
| 79 | 1.2.4.3 | **Writing Test Case (Part 1)** |  | 1d | 2016-10-04 13:00 | 2016-10-05 12:00 | 78 | 4.5d | 0d |  |  | 24h |
| 80 | 1.2.4.3.1 | Create Admin Module Test Case (Part 1) |  | 0.5d | 2016-10-04 13:00 | 2016-10-04 17:00 |  | 4.5d | 0d |  | HaiCM; YenNTH | 8h |
| 81 | 1.2.4.3.2 | Create Account Management Module Test Case (Part 1) |  | 0.5d | 2016-10-05 08:00 | 2016-10-05 12:00 | 80 | 4.5d | 0d |  | HaiCM; YenNTH | 8h |
| 82 | 1.2.4.3.3 | Create System Module Test Case (Part 1) |  | 0.5d | 2016-10-05 08:00 | 2016-10-05 12:00 | 81SS | 4.5d |  |  | HaiCM; YenNTH | 8h |
| 83 | 1.2.4.4 | Create Test Case Checklist (Part 1) |  | 0.5d | 2016-10-04 13:00 | 2016-10-04 17:00 | 79SS | 2.5d | 0d |  | YenNTH | 4h |
| 84 | 1.2.4.5 | Execute Test (Part 1) |  | 2d | 2016-10-05 08:00 | 2016-10-06 17:00 | 83 | 2.5d | 0d |  | HaiCM; YenNTH | 32h |
| 85 | 1.2.4.6 | Create Test Report (Part 1) |  | 0.5d | 2016-10-07 08:00 | 2016-10-07 12:00 | 84 | 2.5d | 0d |  | YenNTH | 4h |
| 86 | 1.2.4.7 | Testing Part 1 Complete | milestone | 0d | 2016-10-07 12:00 | 2016-10-07 12:00 | 85 | 2.5d |  | start no earlier than 2016-10-07 08:00 |  |  |
| 87 | 1.2.5 | Create Progress Report 3 (Part 1) |  | 0.5d | 2016-10-05 13:00 | 2016-10-05 17:00 | 77, 79 | 5d | 0d |  | HuyenPT | 4h |
| 88 | 1.2.6 | Submit Report 3 (Part 1) | milestone | 0d | 2016-10-05 17:00 | 2016-10-05 17:00 | 87 | 5d | 0d |  |  |  |
| 89 | 1.2.7 | Submit Report 4 (Part 1) | milestone | 0d | 2016-10-05 17:00 | 2016-10-05 17:00 | 88 | 5d |  |  |  |  |
| 90 | 1.2.8 | Create Quality Report (Part 1) |  | 1d? | 2016-10-07 13:00 | 2016-10-10 12:00 | 76 | 2.5d |  |  | YenNTH | 8h |
| 91 | 1.2.9 | Create Progress Report 5 (Part 1) |  | 1d? | 2016-10-11 08:00 | 2016-10-11 17:00 | 66 | 0d |  |  | HuyenPT | 8h |
| 92 | 1.2.10 | Submit Report 5 (Part 1) | milestone | 0d | 2016-10-11 17:00 | 2016-10-11 17:00 | 91 | 0d |  |  |  |  |
| 93 | 1.2.11 | Evaluation |  | 1d? | 2016-10-12 08:00 | 2016-10-12 17:00 | 92 | 0d |  |  | Mr.SangNV | 8h |
| 94 | 1.2.12 | End Implement 1 | milestone | 0d | 2016-10-12 17:00 | 2016-10-12 17:00 | 93 | 0d |  |  |  |  |
| 95 | 1.3 | **Implement 2** |  | 29.5d? | 2016-10-13 08:00 | 2016-11-23 12:00 | 20 | 0d |  |  |  | 928h |
| 96 | 1.3.1 | **Requirement** |  | 1d? | 2016-10-13 08:00 | 2016-10-13 17:00 |  | 0d |  |  |  | 8h |
| 97 | 1.3.1.1 | Define User Requirement (Part 2) |  | 1d? | 2016-10-13 08:00 | 2016-10-13 17:00 |  | 0d |  |  | VanTTC | 8h |
| 98 | 1.3.2 | **Analysis & design** |  | 3d? | 2016-10-14 08:00 | 2016-10-18 17:00 | 96 | 0d |  |  |  | 36h |
| 99 | 1.3.2.1 | **User Requirement Specification (Part 2)** |  | 2d? | 2016-10-14 08:00 | 2016-10-18 08:00 |  | 0d |  |  |  | 24h |
| 100 | 1.3.2.1.1 | Create SRS Review Checklist (Part 2) |  | 1d? | 2016-10-14 08:00 | 2016-10-14 17:00 |  | 0d |  |  | YenNTH | 8h |
| 101 | 1.3.2.1.2 | Create User Requirement Sepecification (Part 2) |  | 1d? | 2016-10-14 08:00 | 2016-10-14 17:00 | 100SS | 0d |  |  | VanTTC | 8h |
| 102 | 1.3.2.1.3 | Review User Requirement Specification (Part 2) |  | 0.5d | 2016-10-17 08:00 | 2016-10-17 12:00 | 101 | 0d |  |  | HuyenPT | 4h |
| 103 | 1.3.2.1.4 | Update User Requirement Specification (Part 2) |  | 0.5d? | 2016-10-17 13:00 | 2016-10-17 17:00 | 102 | 0d |  |  | VanTTC | 4h |
| 104 | 1.3.2.1.5 | Complete User Requirement Specification (Part 2) | milestone | 0d | 2016-10-18 08:00 | 2016-10-18 08:00 | 103 | 0d |  | start no earlier than 2016-10-18 08:00 |  |  |
| 105 | 1.3.2.2 | Create Coding Checklist (Part 2) |  | 0.5d | 2016-10-18 08:00 | 2016-10-18 12:00 | 99 | 0.5d |  |  | DangVH | 4h |
| 106 | 1.3.2.3 | Create Progress Report 1 (Part 2) |  | 0.5d | 2016-10-18 08:00 | 2016-10-18 12:00 | 99 | 0d |  |  | HuyenPT | 4h |
| 107 | 1.3.2.4 | Submit Report 1 (Part 2) | milestone | 0d | 2016-10-18 12:00 | 2016-10-18 12:00 | 106 | 0.5d |  |  |  |  |
| 108 | 1.3.2.5 | Create Progress Report 2 (Part 2) |  | 0.5d | 2016-10-18 13:00 | 2016-10-18 17:00 | 106 | 0d |  |  | HuyenPT | 4h |
| 109 | 1.3.2.6 | Submit Report 2 (Part 2) | milestone | 0d | 2016-10-18 17:00 | 2016-10-18 17:00 | 108 | 0d |  |  |  |  |

| ID | WBS | Task | Duration | Start | Finish | Predecessors | Total slack | Free slack | Constraint | Resources | Work |
| --- | --- | --- | --- | --- | --- | --- | --- | --- | --- | --- | --- |
| 110 | 1.3.3 | **Development** | 23.5d? | 2016-10-19 08:00 | 2016-11-21 12:00 | 98 | 0d |  |  |  | 748h |
| 111 | 1.3.3.1 | **Technology Research (Part 3)** | 2d | 2016-10-19 08:00 | 2016-10-20 17:00 |  | 0d |  |  |  | 48h |
| 112 | 1.3.3.1.1 | .NET SignalR | 2d | 2016-10-19 08:00 | 2016-10-20 17:00 |  | 0d |  |  | DangVH; HuyenPT; VanTTC | 48h |
| 113 | 1.3.3.2 | Create Unit Test Checklist (Part 2) | 0.5d | 2016-10-21 08:00 | 2016-10-21 12:00 | 111 | 0d |  |  | DangVH | 4h |
| 114 | 1.3.3.3 | **Code Screen Module** | 1d | 2016-10-19 08:00 | 2016-10-19 17:00 | 111SS | 24.5d |  |  |  | 16h |
| 115 | 1.3.3.3.1 | "Group Management" Screen | 1d | 2016-10-19 08:00 | 2016-10-19 17:00 | 61 | 24.5d |  |  | HaiCM; YenNTH | 16h |
| 116 | 1.3.3.4 | **Code & Unit Test** | 21d? | 2016-10-21 13:00 | 2016-11-21 12:00 | 113 | 0d |  |  |  | 680h |
| 117 | 1.3.3.4.1 | **Common Module** | 2d? | 2016-10-21 13:00 | 2016-10-25 12:00 |  | 0d |  |  |  | 56h |
| 118 | 1.3.3.4.1.1 | User Search Function | 2d | 2016-10-21 13:00 | 2016-10-25 12:00 |  | 0d |  |  | VanTTC | 16h |
| 119 | 1.3.3.4.1.2 | User Rate Book Function | 2d | 2016-10-21 13:00 | 2016-10-25 12:00 | 118SS | 0d |  |  | HuyenPT | 16h |
| 120 | 1.3.3.4.1.3 | Suggest Book/Author Function | 1d? | 2016-10-21 13:00 | 2016-10-24 12:00 | 118SS | 1d |  |  | DangVH; HuyenPT; VanTTC | 24h |
| 121 | 1.3.3.4.2 | **Recommendation Management Module** | 12d | 2016-10-25 13:00 | 2016-11-10 12:00 | 117 | 0d |  |  |  | 376h |
| 122 | 1.3.3.4.2.1 | Management Post Feature | 10d | 2016-10-25 13:00 | 2016-11-08 12:00 |  | 0d |  |  | DangVH; HuyenPT; VanTTC | 240h |
| 123 | 1.3.3.4.2.2 | Management Comment Feature | 5d | 2016-11-01 13:00 | 2016-11-08 12:00 | 122FF | 0d |  | start no earlier than 2016-10-06 08:00 | DangVH; HuyenPT; VanTTC | 120h |
| 124 | 1.3.3.4.2.3 | Manage Reply-Comment Function | 2d | 2016-11-08 13:00 | 2016-11-10 12:00 | 123 | 0d |  |  | DangVH | 16h |
| 125 | 1.3.3.4.3 | **Group Management Module** | 3d? | 2016-11-10 13:00 | 2016-11-15 12:00 | 121 | 0d |  |  |  | 56h |
| 126 | 1.3.3.4.3.1 | Group Manage Feature | 1d | 2016-11-10 13:00 | 2016-11-11 12:00 |  | 0d |  |  | VanTTC | 8h |
| 127 | 1.3.3.4.3.2 | Manage Group Member Feature | 1d? | 2016-11-11 13:00 | 2016-11-14 12:00 | 126 | 0d |  |  | DangVH; HuyenPT; VanTTC | 24h |
| 128 | 1.3.3.4.3.3 | Manage Group Post Feature | 1d? | 2016-11-14 13:00 | 2016-11-15 12:00 | 127 | 0d |  |  | DangVH; HuyenPT; VanTTC | 24h |
| 129 | 1.3.3.4.4 | **Interaction Management Module** | 4d | 2016-11-15 13:00 | 2016-11-21 12:00 | 125 | 0d |  |  |  | 192h |
| 130 | 1.3.3.4.4.1 | Interact With Other Accounts Feature | 4d | 2016-11-15 13:00 | 2016-11-21 12:00 |  | 0d |  |  | DangVH; HuyenPT; VanTTC | 96h |
| 131 | 1.3.3.4.4.2 | Interact With Group Feature | 4d | 2016-11-15 13:00 | 2016-11-21 12:00 | 130SS | 0d |  |  | DangVH; HuyenPT; VanTTC | 96h |
| 132 | 1.3.4 | **Testing** | 5d | 2016-10-21 13:00 | 2016-10-28 12:00 | 116SS | 17d | 0d |  |  | 108h |
| 133 | 1.3.4.1 | Create Test Plan (Part 2) | 0.5d | 2016-10-21 13:00 | 2016-10-21 17:00 |  | 18d | 0d |  | YenNTH; HaiCM | 8h |
| 134 | 1.3.4.2 | Create Test Plan Checklist (Part 2) | 0.5d | 2016-10-24 08:00 | 2016-10-24 12:00 | 133 | 18d | 0d |  | HaiCM; YenNTH | 8h |

| ID | WBS | Task | Type | Duration | Start | Finish | Predecessors | Total slack | Free slack | Resources | Work |
| --- | --- | --- | --- | --- | --- | --- | --- | --- | --- | --- | --- |
| 135 | 1.3.4.3 | **Writing Test Case (Part 2)** |  | 3d | 2016-10-24 13:00 | 2016-10-27 12:00 | 134 | 18d | 0d |  | 48h |
| 136 | 1.3.4.3.1 | Create Common Module Test Case |  | 0.5d | 2016-10-24 13:00 | 2016-10-24 17:00 |  | 18d | 0d | HaiCM; YenNTH | 8h |
| 137 | 1.3.4.3.2 | Create Recommendation Management Module Test Case |  | 1d | 2016-10-25 08:00 | 2016-10-25 17:00 | 136 | 18d | 0d | HaiCM; YenNTH | 16h |
| 138 | 1.3.4.3.3 | Create Group Management Module Test Case |  | 1d | 2016-10-26 08:00 | 2016-10-26 17:00 | 137 | 18d | 0d | HaiCM; YenNTH | 16h |
| 139 | 1.3.4.3.4 | Create Interaction Management Module Test Case |  | 0.5d | 2016-10-27 08:00 | 2016-10-27 12:00 | 138 | 18d |  | HaiCM; YenNTH | 8h |
| 140 | 1.3.4.4 | Create Test Case Checklist (Part 2) |  | 2d | 2016-10-24 13:00 | 2016-10-26 12:00 | 135SS | 17d | 0d | YenNTH | 16h |
| 141 | 1.3.4.5 | Execute Test (Part 2) |  | 1.5d | 2016-10-26 13:00 | 2016-10-27 17:00 | 140 | 17d | 0d | HaiCM; YenNTH | 24h |
| 142 | 1.3.4.6 | Create Test Report (Part 2) |  | 0.5d | 2016-10-28 08:00 | 2016-10-28 12:00 | 141 | 17d | 0d | YenNTH | 4h |
| 143 | 1.3.4.7 | Testing Part 2 Complete | milestone | 0d | 2016-10-28 12:00 | 2016-10-28 12:00 | 142 | 17d |  |  |  |
| 144 | 1.3.5 | Create Progress Report 3 (Part 2) |  | 0.5d | 2016-10-27 13:00 | 2016-10-27 17:00 | 133, 135 | 18.5d | 0d | HuyenPT | 4h |
| 145 | 1.3.6 | Submit Report 3 (Part 2) | milestone | 0d | 2016-10-27 17:00 | 2016-10-27 17:00 | 144 | 18.5d | 0d |  |  |
| 146 | 1.3.7 | Submit Report 4 (Part 2) | milestone | 0d | 2016-10-27 17:00 | 2016-10-27 17:00 | 145 | 18.5d |  |  |  |
| 147 | 1.3.8 | Create Quality Report (Part 2) |  | 1d? | 2016-10-28 13:00 | 2016-10-31 12:00 | 132 | 17d |  | DangVH | 8h |
| 148 | 1.3.9 | Create Progress Report 5 (Part 2) |  | 1d? | 2016-11-21 13:00 | 2016-11-22 12:00 | 116 | 0d |  | HuyenPT | 8h |
| 149 | 1.3.10 | Submit Report 5 (Part 2) | milestone | 0d | 2016-11-22 12:00 | 2016-11-22 12:00 | 148 | 0d |  |  |  |
| 150 | 1.3.11 | Evaluation |  | 1d? | 2016-11-22 13:00 | 2016-11-23 12:00 | 149 | 0d |  | Mr.SangNV | 8h |
| 151 | 1.3.12 | End Implement 2 | milestone | 0d | 2016-11-23 12:00 | 2016-11-23 12:00 | 150 | 0d |  |  |  |
| 152 | 1.4 | **Implement 3** |  | 12d? | 2016-11-23 13:00 | 2016-12-09 12:00 | 95 | 0d |  |  | 244h |
| 153 | 1.4.1 | **Requirement** |  | 1d? | 2016-11-23 13:00 | 2016-11-24 12:00 |  | 0d |  |  | 8h |
| 154 | 1.4.1.1 | Define User Requirement (Part 3) |  | 1d? | 2016-11-23 13:00 | 2016-11-24 12:00 |  | 0d |  | VanTTC | 8h |
| 155 | 1.4.2 | **Analysis & design** |  | 2.5d? | 2016-11-24 13:00 | 2016-11-28 17:00 | 153 | 0d |  |  | 32h |
| 156 | 1.4.2.1 | **User Requirement Specification (Part 3)** |  | 1.5d | 2016-11-24 13:00 | 2016-11-25 17:00 |  | 0d |  |  | 16h |
| 157 | 1.4.2.1.1 | Create SRS Review Checklist (Part 3) |  | 0.5d | 2016-11-24 13:00 | 2016-11-24 17:00 |  | 0d |  | YenNTH | 4h |
| 158 | 1.4.2.1.2 | Create User Requirement Sepecification (Part 3) |  | 0.5d | 2016-11-24 13:00 | 2016-11-24 17:00 | 157SS | 0d |  | VanTTC | 4h |
| 159 | 1.4.2.1.3 | Review User Requirement Specification (Part 3) |  | 0.5d | 2016-11-25 08:00 | 2016-11-25 12:00 | 158 | 0d |  | HuyenPT | 4h |
| 160 | 1.4.2.1.4 | Update User Requirement Specification (Part 3) |  | 0.5d | 2016-11-25 13:00 | 2016-11-25 17:00 | 159 | 0d |  | VanTTC | 4h |
| 161 | 1.4.2.1.5 | Complete User Requirement Specification (Part 3) | milestone | 0d | 2016-11-25 17:00 | 2016-11-25 17:00 | 160 | 0d |  |  |  |
| 162 | 1.4.2.2 | Create Coding Checklist (Part 3) |  | 0.5d | 2016-11-28 08:00 | 2016-11-28 12:00 | 156 | 0.5d |  | DangVH | 4h |
| 163 | 1.4.2.3 | Create Progress Report 1 (Part 3) |  | 0.5d | 2016-11-28 08:00 | 2016-11-28 12:00 | 156 | 0d |  | HuyenPT | 4h |
| 164 | 1.4.2.4 | Submit Report 1 (Part 3) | milestone | 0d | 2016-11-28 12:00 | 2016-11-28 12:00 | 163 | 0.5d |  |  |  |
| 165 | 1.4.2.5 | Create Progress Report 2 (Part 3) |  | 1d? | 2016-11-28 08:00 | 2016-11-28 17:00 | 163SS | 0d |  | HuyenPT | 8h |
| 166 | 1.4.2.6 | Submit Report 2 (Part 3) | milestone | 0d | 2016-11-28 17:00 | 2016-11-28 17:00 | 165 | 0d |  |  |  |

| ID | WBS | Task | Type | Duration | Start | Finish | Predecessors | Total slack | Free slack | Constraint | Resources | Work |
| --- | --- | --- | --- | --- | --- | --- | --- | --- | --- | --- | --- | --- |
| 167 | 1.4.3 | **Development** |  | 7d? | 2016-11-29 08:00 | 2016-12-07 17:00 | 155 | 0d |  |  |  | 88h |
| 168 | 1.4.3.1 | **Technology Research (Part 3)** |  | 1d? | 2016-11-29 08:00 | 2016-11-29 17:00 |  | 7.5d | 0d |  |  | 8h |
| 169 | 1.4.3.1.1 | Generate chart in .NET |  | 1d? | 2016-11-29 08:00 | 2016-11-29 17:00 |  | 7.5d |  |  | VanTTC | 8h |
| 170 | 1.4.3.2 | Create Unit Test Checklist (Part 3) |  | 1d? | 2016-11-29 08:00 | 2016-11-29 17:00 | 168SS | 0d |  |  | DangVH | 8h |
| 171 | 1.4.3.3 | **Code & Unit Test** |  | 6d | 2016-11-30 08:00 | 2016-12-07 17:00 | 170 | 0d |  |  |  | 72h |
| 172 | 1.4.3.3.1 | **Admin Module (Part 2)** |  | 6d | 2016-11-30 08:00 | 2016-12-07 17:00 |  | 0d |  |  |  | 72h |
| 173 | 1.4.3.3.1.1 | Manage User Account Feature |  | 3d | 2016-11-30 08:00 | 2016-12-02 17:00 |  | 0d |  |  | DangVH; HuyenPT | 48h |
| 174 | 1.4.3.3.1.2 | View Statistic Feature |  | 3d | 2016-12-05 08:00 | 2016-12-07 17:00 | 173 | 0d |  |  | VanTTC | 24h |
| 175 | 1.4.4 | **Testing** |  | 4.5d? | 2016-11-30 08:00 | 2016-12-06 12:00 | 171SS | 2d | 0d |  |  | 92h |
| 176 | 1.4.4.1 | Create Test Plan (Part 3) |  | 0.5d | 2016-11-30 08:00 | 2016-11-30 12:00 |  | 3.5d | 0d |  | YenNTH; HaiCM | 8h |
| 177 | 1.4.4.2 | Create Test Plan Checklist (Part 3) |  | 0.5d | 2016-11-30 13:00 | 2016-11-30 17:00 | 176 | 3.5d | 0d |  | HaiCM; YenNTH | 8h |
| 178 | 1.4.4.3 | **Writing Test Case (Part 3)** |  | 2d | 2016-12-01 08:00 | 2016-12-02 17:00 | 177 | 3.5d | 0d |  |  | 32h |
| 179 | 1.4.4.3.1 | Create System Module Test Case (Part 2) |  | 1d | 2016-12-01 08:00 | 2016-12-01 17:00 |  | 3.5d | 0d |  | HaiCM; YenNTH | 16h |
| 180 | 1.4.4.3.2 | Create Admin Module Test Case (Part 2) |  | 1d | 2016-12-02 08:00 | 2016-12-02 17:00 | 179 | 3.5d |  |  | HaiCM; YenNTH | 16h |
| 181 | 1.4.4.4 | Create Test Case Checklist (Part 3) |  | 1d? | 2016-12-01 08:00 | 2016-12-01 17:00 | 178SS | 2d | 0d |  | YenNTH | 8h |
| 182 | 1.4.4.5 | Execute Test (Part 3) |  | 2d | 2016-12-02 08:00 | 2016-12-05 17:00 | 181 | 2d | 0d |  | HaiCM; YenNTH | 32h |
| 183 | 1.4.4.6 | Create Test Report (Part 3) |  | 0.5d | 2016-12-06 08:00 | 2016-12-06 12:00 | 182 | 2d | 0d |  | YenNTH | 4h |
| 184 | 1.4.4.7 | Testing Part 3 Complete | milestone | 0d | 2016-12-06 12:00 | 2016-12-06 12:00 | 183 | 2d |  |  |  |  |
| 185 | 1.4.5 | Create Progress Report 3 (Part 3) |  | 0.5d | 2016-11-23 13:00 | 2016-11-23 17:00 |  | 11.5d | 0d |  | HuyenPT | 4h |
| 186 | 1.4.6 | Submit Report 3 (Part 3) | milestone | 0d | 2016-11-23 17:00 | 2016-11-23 17:00 | 185 | 11.5d | 0d |  |  |  |
| 187 | 1.4.7 | Submit Report 4 (Part 3) | milestone | 0d | 2016-11-23 17:00 | 2016-11-23 17:00 | 186 | 11.5d |  | finish no earlier than 2016-09-15 17:00 |  |  |
| 188 | 1.4.8 | Create Quality Report (Part 3) |  | 1d? | 2016-12-06 13:00 | 2016-12-07 12:00 | 175 | 2d |  |  | DangVH | 8h |
| 189 | 1.4.9 | Create Progress Report 5 (Part 3) |  | 0.5d | 2016-12-08 08:00 | 2016-12-08 12:00 | 171 | 0d |  |  | HuyenPT | 4h |
| 190 | 1.4.10 | Submit Report 5 (Part 3) | milestone | 0d | 2016-12-08 12:00 | 2016-12-08 12:00 | 189 | 0d |  |  |  |  |
| 191 | 1.4.11 | Evaluation |  | 1d? | 2016-12-08 13:00 | 2016-12-09 12:00 | 190 | 0d |  |  | Mr.SangNV | 8h |
| 192 | 1.4.12 | End Implement 3 | milestone | 0d | 2016-12-09 12:00 | 2016-12-09 12:00 | 191 | 0d |  |  |  |  |

| ID | WBS | Task | Type | Duration | Start | Finish | Predecessors | Total slack | Resources | Work |
| --- | --- | --- | --- | --- | --- | --- | --- | --- | --- | --- |
| 193 | 1.5 | **Termination** |  | 8.5d | 2016-12-09 13:00 | 2016-12-21 17:00 | 152 | 0d |  | 164h |
| 194 | 1.5.1 | Create lession learned |  | 0.5d | 2016-12-09 13:00 | 2016-12-09 17:00 |  | 0d | HuyenPT | 4h |
| 195 | 1.5.2 | **Final Report Document (Report 6)** |  | 2d | 2016-12-12 08:00 | 2016-12-13 17:00 | 194 | 0d |  | 80h |
| 196 | 1.5.2.1 | Create Final Report document |  | 2d | 2016-12-12 08:00 | 2016-12-13 17:00 |  | 0d | All Members | 16h |
| 197 | 1.5.2.2 | Create Installing Guide |  | 1d | 2016-12-12 08:00 | 2016-12-12 17:00 | 196SS | 0d | DangVH | 8h |
| 198 | 1.5.2.3 | Create User Guideline |  | 1d | 2016-12-13 08:00 | 2016-12-13 17:00 | 197 | 0d | HaiCM; YenNTH | 16h |
| 199 | 1.5.2.4 | Create Project Result Assessment |  | 1d | 2016-12-12 08:00 | 2016-12-12 17:00 | 196SS | 1d | VanTTC | 8h |
| 200 | 1.5.2.5 | Create Slides for Final Presentation |  | 2d | 2016-12-12 08:00 | 2016-12-13 17:00 | 196SS | 0d | DangVH; HuyenPT | 32h |
| 201 | 1.5.3 | Submit all Final Documents and Source codes | milestone | 0d | 2016-12-13 17:00 | 2016-12-13 17:00 | 195 | 0d |  |  |
| 202 | 1.5.4 | **Pre-closing** |  | 4d | 2016-12-14 08:00 | 2016-12-19 17:00 | 201 | 0d |  | 64h |
| 203 | 1.5.4.1 | Trainning presentation |  | 4d | 2016-12-14 08:00 | 2016-12-19 17:00 |  | 0d | All Members; Mr.SangNV | 64h |
| 204 | 1.5.5 | **Closing** |  | 2d | 2016-12-20 08:00 | 2016-12-21 17:00 | 202 | 0d |  | 16h |
| 205 | 1.5.5.1 | Presentation for Capstone Project |  | 2d | 2016-12-20 08:00 | 2016-12-21 17:00 |  | 0d | All Members | 16h |
| 206 | 1.5.5.2 | Complete Project | milestone | 0d | 2016-12-21 17:00 | 2016-12-21 17:00 | 205 | 0d |  |  |
